# FirstLaunch

Schedule from MS Project, 2014-04-01 to 2014-09-09.

## Calendars

- Standard: Mon-Fri 08:00-12:00, 13:00-17:00; Sat-Sun off.

## Resources

| Resource |
| --- |
| Blair Tony |
| Blocher Christoph |
| Berlusconi Silvio |
| Clay Cassius |
| Clinton Hillary |
| Lauda Niki |
| Obama Barak |
| Pelé |
| Putin Vladimir |
| Sarkozy Nicolas |
| Bush George |

## Schedule

| ID | WBS | Task | Type | Duration | Start | Finish | Predecessors | Total slack | Free slack | Constraint | Resources | Work | Profile |
| --- | --- | --- | --- | --- | --- | --- | --- | --- | --- | --- | --- | --- | --- |
| 1 | 1 | **SwissGrooves** |  | 115d | 2014-04-01 | 2014-09-09 |  | 0d |  |  |  | 5050.4h |  |
| 2 | 1.1 | Projektbeginn | milestone, manual | 0d | 2014-04-01 | 2014-04-01 |  |  |  |  |  |  |  |
| 3 | 1.2 | POC | milestone, manual | 0d | 2014-05-15 | 2014-05-15 | 8 |  |  |  |  |  |  |
| 4 | 1.3 | Konzept | milestone, manual | 0d | 2014-09-08 | 2014-09-08 | 13 |  |  |  |  |  |  |
| 5 | 1.4 | Implementation | milestone, manual | 0d | 2014-07-10 | 2014-07-10 | 43 |  |  |  |  |  |  |
| 6 | 1.5 | Test | milestone, manual | 0d | 2014-06-24 | 2014-06-24 | 77 |  |  |  |  |  |  |
| 7 | 1.6 | Abschluss | milestone, manual | 0d | 2014-09-09 | 2014-09-09 | 121 |  |  |  |  |  |  |
| 8 | 1.7 | **R1.1 PoC** |  | 27d | 2014-04-08 | 2014-05-14 | 44 | 8d | 0d |  |  | 400h |  |
| 9 | 1.7.1 | PoC-Rea 1 |  | 15d | 2014-04-22 | 2014-05-12 |  | 10d |  |  | Berlusconi Silvio | 120h | Java-Entwickler |
| 10 | 1.7.2 | PoC-Rea 2 |  | 19d | 2014-04-08 | 2014-05-02 |  | 16d |  |  | Clay Cassius | 152h | Webshop Spezialist |
| 11 | 1.7.3 | PoC-Rea 3 |  | 16d | 2014-04-16 | 2014-05-14 |  | 8d |  |  | Lauda Niki | 128h | Software Architekt |
| 12 | 1.8 | PoC Fertig | milestone | 0d | 2014-05-14 | 2014-05-14 | 8 | 83d |  |  |  |  |  |
| 13 | 1.9 | **R1.2 AR1.0** |  | 114d | 2014-04-01 | 2014-09-05 | 2 | 1d | 0d |  |  | 2212h |  |
| 14 | 1.9.1 | AR-Rea-Probehör |  | 10d | 2014-06-24 | 2014-07-07 | 48 | 24d |  |  | Clay Cassius | 80h | Java-Entwickler |
| 15 | 1.9.2 | AR-Rea-Bestell |  | 16d | 2014-07-16 | 2014-08-06 | 49 | 2d |  |  | Lauda Niki | 128h | Java-Entwickler |
| 16 | 1.9.3 | AR-Rea-CrossSell |  | 14d | 2014-07-02 | 2014-07-28 | 50 | 4d |  |  | Obama Barak | 112h | Java-Entwickler |
| 17 | 1.9.4 | AR-Rea-Bezahl |  | 15d | 2014-07-03 | 2014-07-23 | 51 | 12d |  |  | Blocher Christoph [80%] | 96h | Java-Entwickler |
| 18 | 1.9.5 | AR-Rea-Socializing |  | 16d | 2014-06-06 | 2014-06-27 | 52 | 30d |  |  | Pelé | 128h | Java-Entwickler |
| 19 | 1.9.6 | AR-Rea-Track |  | 8d | 2014-07-08 | 2014-07-17 | 53 | 16d |  |  | Clay Cassius | 64h | Java-Entwickler |
| 20 | 1.9.7 | AR-Rea-Stammkund |  | 12d | 2014-07-18 | 2014-08-04 | 54 | 4d |  |  | Clay Cassius | 96h | Java-Entwickler |
| 21 | 1.9.8 | AR-Rea-IndividRabatt |  | 8d | 2014-06-24 | 2014-07-03 | 55 | 26d |  |  | Lauda Niki | 64h | Java-Entwickler |
| 22 | 1.9.9 | AR-Rea-Ratenkauf |  | 4d | 2014-06-04 | 2014-06-09 | 56 | 44d |  |  | Lauda Niki | 32h | Java-Entwickler |
| 23 | 1.9.10 | AR-Rea-CDBrennen |  | 4d | 2014-08-05 | 2014-08-08 | 57 | 0d |  |  | Clay Cassius | 32h | Java-Entwickler |
| 24 | 1.9.11 | AR-Rea-ChartKauf |  | 5d | 2014-08-04 | 2014-08-08 | 58 | 0d |  | as late as possible | Blocher Christoph [80%] | 32h | Java-Entwickler |
| 25 | 1.9.12 | AR-Rea-Tunesearch |  | 4d | 2014-07-04 | 2014-07-09 | 59 | 17d |  |  | Clinton Hillary | 32h | Java-Entwickler |
| 26 | 1.9.13 | AR-Rea-Account |  | 8d | 2014-07-04 | 2014-07-15 | 60 | 18d |  |  | Lauda Niki | 64h | Java-Entwickler |
| 27 | 1.9.14 | AR-Rea-Contact |  | 8d | 2014-06-12 | 2014-06-23 | 61 | 34d |  |  | Lauda Niki | 64h | Java-Entwickler |
| 28 | 1.9.15 | AR-Rea-Complaint |  | 8d | 2014-06-24 | 2014-07-03 | 62 | 21d |  |  | Clinton Hillary | 64h | Java-Entwickler |
| 29 | 1.9.16 | AR-Rea-Language |  | 4d | 2014-06-30 | 2014-07-03 | 63 | 26d |  |  | Pelé | 32h | Java-Entwickler |
| 30 | 1.9.17 | AR-Rea-Inkasso |  | 8d | 2014-06-02 | 2014-06-11 | 64 | 42d |  |  | Clay Cassius | 64h | Java-Entwickler |
| 31 | 1.9.18 | AR-Rea-NFR 1 |  | 8d | 2014-06-12 | 2014-06-23 | 65 | 55d |  |  | Clay Cassius | 64h | Java-Entwickler |
| 32 | 1.9.19 | AR-Rea-NFR 2 |  | 12d | 2014-07-04 | 2014-07-21 | 65 | 14d |  |  | Pelé | 96h | Java-Entwickler |
| 33 | 1.9.20 | AR-Rea-DB |  | 15d | 2014-05-07 | 2014-05-27 | 72 | 53d |  |  | Bush George [90%] | 108h | DB-Spezialist |
| 34 | 1.9.21 | AR-Rea-Konverter |  | 10d | 2014-07-22 | 2014-08-04 | 66, 67, 68, 69 | 4d |  |  | Pelé | 80h | Java-Entwickler |
| 35 | 1.9.22 | AR-Rea-Infra 1 |  | 6d | 2014-04-01 | 2014-04-08 |  | 88d |  |  | Lauda Niki | 48h | Java-Entwickler |
| 36 | 1.9.23 | AR-Rea-Infra 2 |  | 14d | 2014-04-01 | 2014-04-18 |  | 80d |  |  | Sarkozy Nicolas | 112h | Java-Entwickler |
| 37 | 1.9.24 | AR-Rea-Content |  | 10d | 2014-04-08 | 2014-04-21 |  | 79d |  |  | Pelé | 80h | System-Spezialist |
| 38 | 1.9.25 | AR-Rea-IDManagement |  | 5d | 2014-04-01 | 2014-04-07 |  | 89d |  |  | Pelé | 40h | Java-Entwickler |
| 39 | 1.9.26 | AR-Test-Abnahmetest 1 |  | 10d | 2014-08-18 | 2014-08-29 | 14, 15, 16, 17, 18, 19, 20, 21, 22, 23, 24, 25, 26, 27, 28, 29, 30, 32, 33, 34, 35, 37, 38, 86, 100, 36 | 5d |  |  | Clinton Hillary | 80h | Java-Entwickler |
| 40 | 1.9.27 | AR-Test-Abnahmetest 2 |  | 10d | 2014-08-11 | 2014-09-05 | 14, 15, 16, 17, 18, 19, 20, 21, 22, 23, 24, 25, 26, 27, 28, 29, 30, 32, 33, 34, 35, 37, 38, 86, 100, 36 | 0d |  |  | Putin Vladimir | 80h | Java-Entwickler |
| 41 | 1.9.28 | AR-Projektleitung |  | 30d | 2014-04-10 | 2014-07-03 |  | 37d |  |  | Putin Vladimir | 240h | Projektleiter |
| 42 | 1.10 | Konzept | milestone | 0d | 2014-07-09 | 2014-07-09 | 44, 77, 47 | 43d |  |  |  |  |  |

Notes:
- 9: Proof of Concept: Realisation
- 10: Proof of Concept: Realisation
- 11: Proof of Concept: Realisation
- 14: Siehe AK 1.0
- 15: Siehe AK 1.0
- 16: Siehe AK 1.0
- 17: Siehe AK 1.0
- 18: Siehe AK 1.0
- 19: Siehe AK 1.0
- 20: Siehe AK 1.0
- 21: Siehe AK 1.0
- 22: Siehe AK 1.0
- 23: Siehe AK 1.0
- 24: Siehe AK 1.0
- 25: Siehe AK 1.0
- 26: Siehe AK 1.0
- 27: Siehe AK 1.0
- 28: Siehe AK 1.0
- 29: Siehe AK 1.0
- 30: Siehe AK 1.0
- 33: Ausarbeiten Datenbank-Schemata und Generierung der DB und aller nötigen Zugriffsschichten
- 34: Konverter an Systemschnittstellen bei unterschiedlichen (XML-) Formaten, die innerhalb und ausserhalb des Webshops im Gebrauch sind
- 37: Content-Management (Bildchen verschiedener Grösse etc.) Import-Programm für die Produktdaten (Artikelnummern, Preise, Fotos etc.)
- 38: Kunden-IDs
- 39: Unterstützung bei den Abnahmetests (diese erfolgen durch den Kunden)
- 41: Allgemeine Projektleitungsaufwände für den Release 1.0

| ID | WBS | Task | Duration | Start | Finish | Predecessors | Total slack | Free slack | Resources | Work | Profile |
| --- | --- | --- | --- | --- | --- | --- | --- | --- | --- | --- | --- |
| 43 | 1.11 | **R2.1 AK** | 72d | 2014-04-01 | 2014-07-09 |  | 11d | 0d |  | 1064.8h |  |
| 44 | 1.11.1 | **R2.1.1 AK0.5** | 5d | 2014-04-01 | 2014-04-07 | 2 | 14d | 0d |  | 76h |  |
| 45 | 1.11.1.1 | AK-CorporateDesign_05 | 5d | 2014-04-01 | 2014-04-07 |  | 14d | 2d | Obama Barak | 40h | Webshop Spezialist |
| 46 | 1.11.1.2 | AK-Grobarchitektur_05 | 5d | 2014-04-01 | 2014-04-07 |  | 14d | 0d | Bush George [90%] | 36h | Software Architekt |
| 47 | 1.11.2 | **R2.1.2 AK-Spez** | 72d | 2014-04-01 | 2014-07-09 |  | 11d | 0d |  | 988.8h |  |
| 48 | 1.11.2.1 | AK-Spez-Probehör | 5d | 2014-06-12 | 2014-06-18 | 70, 71, 72, 73, 75, 76, 90, 92, 94, 111, 113, 74, 8 | 24d | 0d | Berlusconi Silvio | 40h | Requirements Engineer |
| 49 | 1.11.2.2 | AK-Spez-Bestell | 8d | 2014-06-13 | 2014-06-24 | 8, 70, 71, 72, 73, 75, 76, 90, 92, 94, 111, 113, 74 | 2d | 0d | Obama Barak | 64h | Requirements Engineer |
| 50 | 1.11.2.3 | AK-Spez-CrossSell | 7d | 2014-05-27 | 2014-06-04 | 8, 70, 71, 72, 73, 75, 76, 90, 92, 94, 111, 113, 74 | 4d | 0d | Obama Barak | 56h | Requirements Engineer |
| 51 | 1.11.2.4 | AK-Spez-Bezahl | 6d | 2014-06-05 | 2014-06-12 | 8, 70, 71, 72, 73, 75, 76, 90, 92, 94, 111, 113, 74 | 12d | 0d | Obama Barak | 48h | Requirements Engineer |
| 52 | 1.11.2.5 | AK-Spez-Socializing | 8d | 2014-05-27 | 2014-06-05 | 8, 70, 71, 72, 73, 75, 76, 90, 92, 94, 111, 113, 74 | 30d | 0d | Pelé | 64h | Requirements Engineer |
| 53 | 1.11.2.6 | AK-Spez-Track | 4d | 2014-06-04 | 2014-06-09 | 8, 70, 71, 72, 73, 75, 76, 90, 92, 94, 111, 113, 74 | 16d | 0d | Blocher Christoph [80%] | 25.6h | Requirements Engineer |
| 54 | 1.11.2.7 | AK-Spez-Stammkund | 6d | 2014-05-27 | 2014-06-03 | 8, 70, 71, 72, 73, 75, 76, 90, 92, 94, 111, 113, 74 | 4d | 0d | Blocher Christoph [80%] | 38.4h | Requirements Engineer |
| 55 | 1.11.2.8 | AK-Spez-IndividRabatt | 4d | 2014-06-10 | 2014-06-13 | 8, 70, 71, 72, 73, 75, 76, 90, 92, 94, 111, 113, 74 | 26d | 0d | Blocher Christoph [80%] | 25.6h | Requirements Engineer |
| 56 | 1.11.2.9 | AK-Spez-Ratenkauf | 2d | 2014-06-02 | 2014-06-03 | 8, 70, 71, 72, 73, 75, 76, 90, 92, 94, 111, 113, 74 | 40d | 0d | Berlusconi Silvio | 16h | Requirements Engineer |
| 57 | 1.11.2.10 | AK-Spez-CDBrennen | 2d | 2014-06-04 | 2014-06-05 | 8, 70, 71, 72, 73, 75, 76, 90, 92, 94, 111, 113, 74 | 0d |  | Berlusconi Silvio | 16h | Requirements Engineer |
| 58 | 1.11.2.11 | AK-Spez-ChartKauf | 2d | 2014-06-19 | 2014-06-20 | 8, 70, 71, 72, 73, 75, 76, 90, 92, 94, 111, 113, 74 | 27d | 13d | Berlusconi Silvio | 16h | Requirements Engineer |
| 59 | 1.11.2.12 | AK-Spez-TuneSearch | 2d | 2014-06-23 | 2014-06-24 | 8, 70, 71, 72, 73, 75, 76, 90, 92, 94, 111, 113, 74 | 18d | 0d | Berlusconi Silvio | 16h | Requirements Engineer |
| 60 | 1.11.2.13 | AK-Spez-Account | 5d | 2014-06-25 | 2014-07-01 | 8, 70, 71, 72, 73, 75, 76, 90, 92, 94, 111, 113, 74 | 18d | 0d | Berlusconi Silvio [80%] | 32h | Requirements Engineer |
| 61 | 1.11.2.14 | AK-Spez-Contact | 4d | 2014-06-06 | 2014-06-11 | 8, 70, 71, 72, 73, 75, 76, 90, 92, 94, 111, 113, 74 | 34d | 0d | Berlusconi Silvio | 32h | Requirements Engineer |
| 62 | 1.11.2.15 | AK-Spez-Complaint | 4d | 2014-05-27 | 2014-05-30 | 8, 70, 71, 72, 73, 75, 76, 90, 92, 94, 111, 113, 74 | 21d | 0d | Berlusconi Silvio | 32h | Requirements Engineer |
| 63 | 1.11.2.16 | AK-Spez-Language | 2d | 2014-06-10 | 2014-06-11 | 8, 70, 71, 72, 73, 75, 76, 90, 92, 94, 111, 113, 74 | 27d | 2d | Blair Tony | 16h | Requirements Engineer |
| 64 | 1.11.2.17 | AK-Spez-Inkasso | 4d | 2014-05-27 | 2014-05-30 | 8, 70, 71, 72, 73, 75, 76, 90, 92, 94, 111, 113, 74 | 42d | 0d | Sarkozy Nicolas | 32h | Requirements Engineer |
| 65 | 1.11.2.18 | AK-Spez-NFR | 10d | 2014-05-27 | 2014-06-09 | 8, 70, 71, 72, 73, 75, 76, 90, 92, 94, 111, 113, 74 | 14d | 0d | Blair Tony | 80h | Requirements Engineer |
| 66 | 1.11.2.19 | AK-Schnittstellen-Geld | 5d | 2014-06-16 | 2014-06-20 | 8, 70, 71, 72, 73, 75, 76, 90, 92, 94, 111, 113, 74 | 17d | 13d | Blocher Christoph [80%] | 32h | Software Architekt |
| 67 | 1.11.2.20 | AK-Schnittstellen-Kunde | 3d | 2014-06-23 | 2014-06-25 | 8, 70, 71, 72, 73, 75, 76, 90, 92, 94, 111, 113, 74 | 14d | 10d | Blocher Christoph [80%] | 19.2h | Software Architekt |
| 68 | 1.11.2.21 | AK-Schnittstellen-Produkt | 3d | 2014-07-07 | 2014-07-09 | 8, 70, 71, 72, 73, 75, 76, 90, 92, 94, 111, 113, 74 | 4d | 0d | Berlusconi Silvio [80%] | 19.2h | Software Architekt |
| 69 | 1.11.2.22 | AK-Schnittstellen-Sozial | 3d | 2014-07-02 | 2014-07-04 | 8, 70, 71, 72, 73, 75, 76, 90, 92, 94, 111, 113, 74 | 7d | 3d | Berlusconi Silvio [80%] | 19.2h | Software Architekt |
| 70 | 1.11.2.23 | AK-CorporateDesign_10 | 2d | 2014-04-14 | 2014-04-15 | 45 | 29d |  | Blocher Christoph [80%] | 12.8h | Webshop Spezialist |
| 71 | 1.11.2.24 | AK-Grobarchitektur_10 | 2d | 2014-04-08 | 2014-04-09 | 46 | 33d |  | Blocher Christoph [80%] | 12.8h | Software Architekt |
| 72 | 1.11.2.25 | AK-Datenmodell | 10d | 2014-04-23 | 2014-05-06 | 44, 78, 88, 74, 106, 109, 115, 117, 119 | 14d | 0d | Bush George [90%] | 72h | DB-Spezialist |
| 73 | 1.11.2.26 | AK-GUI | 3d | 2014-05-14 | 2014-05-16 | 44, 78, 88, 74, 106, 109, 115, 117, 119 | 6d |  | Blair Tony | 24h | Webentwickler |
| 74 | 1.11.2.27 | AK-Styleguide | 8d | 2014-04-01 | 2014-04-10 | 2 | 11d | 8d | Blair Tony | 64h | Webentwickler |
| 75 | 1.11.2.28 | AK-ContentManagement | 3d | 2014-05-19 | 2014-05-21 | 44, 78, 88, 74, 106, 109, 115, 117, 119 | 3d |  | Blair Tony | 24h | CMS-Spezialist |
| 76 | 1.11.2.29 | AK-IDManagement | 5d | 2014-04-23 | 2014-04-29 | 44, 78, 88, 74, 106, 109, 115, 117, 119 | 19d |  | Pelé | 40h | Spezifikateur |

Notes:
- 43: Applikationskonzept „SwissGrooves
- 44: Applikationskonzept „SwissGrooves für den Pilot/PoC
- 45: Beschreibung des Corporate Design des Webshops und der allgemeinen, durchgängigen Merkmale der Benutzeroberfläche
- 46: Beschreibung der Grobarchitektur des Webshops mit mindestens folgenden Elementen: - Kontext-Diagramm - Informationsmodell - Funktionenmodell - Systementwurf Ausserdem Liste der zu realisierenden Use Cases für den PoC; Beschreibung, wie die Funktionalität
- 47: Applikationskonzept für „SwissGrooves Vers. 1.0 (definitive Fassung)
- 48: Probehören von Titeln: Nicht zu lange, nicht zu oft
- 49: Bestellvorgang, Verwaltung Warenkorb etc.; hier auch E-Mail-Bestätigung, Option Ladenabholung, 1-Click-Bestellungen und Editieren einer Bestellung vor dem Versand. Über den Warenkorb wird auch die Bestellung von nicht-materiellem Bestellgut geregelt
- 50: Bestellvorgang, Verwaltung Warenkorb etc.; hier auch Option Ladenabholung, 1-Click-Bestellungen und Editieren einer Bestellung vor dem Versand. Über den Warenkorb wird auch die Bestellung von nicht-materiellem Bestellgut geregelt
- 51: Bezahlung, auch Berücksichtigung sicherer Bezahlmethoden
- 52: Bewertung, Anzeigenbrett, Newsletter, Blogs etc.
- 53: Nachverfolgung einer Bestellung
- 54: Parametrierung der Behandlung von Stammkunden (z.B. automatische Treueboni)
- 55: Einräumung individueller Rabatte etc.
- 56: Parametrierung von Ratenkauf-Möglichkeiten
- 57: Individuelle Zusammenstellung von Titeln für das Brennen einer CD
- 58: Auswahl von Songs zum Kauf aus den aktuellen Charts verschiedener Sender
- 59: Suchen von Titeln nach der Melodie
- 60: Einrichtung und Verwaltung eines persönlichen Kundenkontos
- 61: Kontaktaufnahme seitens eines Kunden mit SwissGrooves (email, Kontaktformular, Gästebuch)
- 62: Beschwerdemanagement
- 63: Wechsel der Anzeigesprache
- 64: Inanspruchnahme des Inkassodienstleisters
- 65: Erstellung Dokument mit nichtfunktionalen Anforderungen
- 66: SS-Payment: Zahlungsdatensatz (XML), für Zahlungen an Zulieferer, seitens Kunde an Payment Service, von Inkassofirma, von Payment-Service an Webshop SS-Bestellung: Beschreibt eine komplette Bestellung, enhält Verweise auf die bestellten Produkte und den K
- 67: SS-Kundendaten: Kundendatensatz (XML), universell verwendet; nötig für Geld/Sozial-Schnittstellen
- 68: SS-Produktdaten: Produktdatensatz (XML), der in der gesamten Lösung einheitlich verwendet wird; nötig für Geld-Schnittstelle
- 69: SS-ServiceCenter: Im Wesentlichen Format einer Botschaft, die entweder veröffentlicht wird (Foren, Bewertungen etc.) oder aber zwischen Kunden ausgetauscht wird
- 70: Anpassungen/Verbesserungen nach dem internen Review der 0.5-Version
- 71: Anpassungen/Verbesserungen nach dem internen Review der 0.5-Version
- 72: Sämtliche fachlichen Entitäten und Attribute. Achtung: Ändert sich erwartungsgemäss mehrfach über die Zeit!
- 73: Bildschirmfolge und -steuerungs bzw. -navigationskonzept für das GUI
- 74: Styleguide für den gesamten Webshop
- 75: Konzept Content Management (Produkt-Fotos etc.)
- 76: Kunden-IDs

| ID | WBS | Task | Duration | Start | Finish | Predecessors | Total slack | Free slack | Resources | Work | Profile |
| --- | --- | --- | --- | --- | --- | --- | --- | --- | --- | --- | --- |
| 77 | 1.12 | **R2.2 TK** | 60d | 2014-04-01 | 2014-06-23 |  | 9d | 0d |  | 240h |  |
| 78 | 1.12.1 | **R2.2.1 TK-PoC** | 10d | 2014-04-01 | 2014-04-14 | 2 | 9d | 6d |  | 80h |  |
| 79 | 1.12.1.1 | TK-PoC | 10d | 2014-04-01 | 2014-04-14 |  | 9d |  | Clinton Hillary | 80h | Test-Spezialist |
| 80 | 1.12.2 | **R2.2.2 TK-Complete** | 20d | 2014-05-27 | 2014-06-23 | 8, 70, 71, 72, 73, 75, 76, 90, 92, 94, 111, 113, 74 | 26d | 12d |  | 160h |  |
| 81 | 1.12.2.1 | TK-Complete | 20d | 2014-05-27 | 2014-06-23 |  | 26d |  | Clinton Hillary | 160h | Test-Spezialist |
| 82 | 1.13 | **R2.3 BHB** | 35d | 2014-04-29 | 2014-06-16 | 86 | 56d | 54d |  | 160h |  |
| 83 | 1.13.1 | BHB-Doc | 5d | 2014-06-03 | 2014-06-09 |  | 46d |  | Sarkozy Nicolas | 40h | Test-Spezialist |
| 84 | 1.13.2 | BHB-Wiki | 5d | 2014-06-10 | 2014-06-16 |  | 41d |  | Sarkozy Nicolas | 40h | Test-Spezialist |
| 85 | 1.13.3 | BHB-Online | 10d | 2014-04-29 | 2014-05-12 |  | 66d |  | Sarkozy Nicolas | 80h | Test-Spezialist |
| 86 | 1.14 | **R2.4 OHB1.0** | 5d | 2014-04-22 | 2014-04-28 |  | 66d | 0d |  | 40h |  |
| 87 | 1.14.1 | OHB | 5d | 2014-04-22 | 2014-04-28 |  | 66d |  | Sarkozy Nicolas | 40h |  |
| 88 | 1.15 | **R3.1 BC** | 5d | 2014-04-14 | 2014-04-18 | 2 | 5d | 2d |  | 40h |  |
| 89 | 1.15.1 | BC | 5d | 2014-04-14 | 2014-04-18 |  | 5d |  | Putin Vladimir | 40h | Projektleiter |
| 90 | 1.16 | **R3.2 BO** | 15d | 2014-05-06 | 2014-05-26 | 44, 78, 88, 74, 106, 109, 115, 117, 119 | 0d |  |  | 120h |  |
| 91 | 1.16.1 | BO | 15d | 2014-05-06 | 2014-05-26 |  | 0d |  | Putin Vladimir | 120h | Projektleiter |
| 92 | 1.17 | **R3.3 RG** | 15d | 2014-04-23 | 2014-05-13 | 44, 78, 88, 74, 106, 109, 115, 117, 119 | 9d |  |  | 120h |  |
| 93 | 1.17.1 | RG | 15d | 2014-04-23 | 2014-05-13 |  | 9d |  | Blair Tony | 120h | Rechtsberater |
| 94 | 1.18 | **R3.4 NP** | 10d | 2014-04-23 | 2014-05-06 | 44, 78, 88, 74, 106, 109, 115, 117, 119 | 14d |  |  | 64h |  |
| 95 | 1.18.1 | NP | 10d | 2014-04-23 | 2014-05-06 |  | 14d |  | Blocher Christoph [80%] | 64h | Marketingspezialist |
| 96 | 1.19 | **R4.1 RO** | 10d | 2014-07-10 | 2014-07-23 | 48, 49, 50, 51, 52, 53, 54, 55, 56, 57, 58, 59, 60, 61, 62, 63, 64, 65, 66, 67, 68, 69, 80 | 19d |  |  | 80h |  |
| 97 | 1.19.1 | RO | 10d | 2014-07-10 | 2014-07-23 |  | 19d |  | Putin Vladimir | 80h | Projektleiter |
| 98 | 1.20 | **R4.2 MK** | 20d | 2014-04-23 | 2014-05-20 | 44, 78, 88, 74, 106, 109, 115, 117, 119 | 79d |  |  | 160h |  |
| 99 | 1.20.1 | MK | 20d | 2014-04-23 | 2014-05-20 |  | 79d |  | Obama Barak | 160h | Marketingspezialist |
| 100 | 1.21 | **R4.3 SK** | 3d | 2014-07-14 | 2014-07-16 | 48, 49, 50, 51, 52, 53, 54, 55, 56, 57, 58, 59, 60, 61, 62, 63, 64, 65, 66, 67, 68, 69, 80 | 12d |  |  | 24h |  |
| 101 | 1.21.1 | SK | 3d | 2014-07-14 | 2014-07-16 |  | 12d |  | Clinton Hillary | 24h | Test-Spezialist |

Notes:
- 77: Testkonzept
- 78: Testkonzept Vers. 0.5
- 79: Vorversion Testkonzept für den PoC; es wird von Hand getestet ohne systematisches Vorgehen. Das Konzept enthält gleichwohl die wichtigsten Testfälle für die zentrale Funktionalität
- 80: Testkonzept Vers 1.0 für Webshop Vers. 1.0
- 81: Vollständiges Testkonzept, welches das generelle Testvorgehen, sämtliche Testfälle und sämtliche Test-Szenarien für die Integrations- und Abnahmetests enthält
- 82: Webshop Benutzerhandbuch
- 83: Benutzerhandbuch in Dokumentenform
- 84: Wiki mit Hinweisen zur Benutzung des Systems
- 85: Online-Hilfe, vom Webshop aus zu erreichen
- 86: Webshop Betriebs-Handbuch
- 87: Betriebs-Handbuch: Wichtigste Prozesse des Webshops, Restart/Recovery, Backup-Konzept etc.
- 88: Business Case „SwissGrooves
- 89: Business Case (klassisch)
- 90: Geschäftsprozesse & -Modell/Strategie „SwissGrooves
- 91: Betriebsorganisation: Geschäftsprozesse und -modell, Strategie SwissGrooves ("Strategiepapier")
- 92: Zahlungssystem & rechtliche Grundlagen
- 93: Auswahl der anzubietenden Zahlungsmöglichkeiten, Abklärung aller nötigen rechtlichen und sicherheitstechnischen Fragen, Ausarbeitung AGBs. Es werden zwei Dokumente erzeugt: - Sicherheitsdokument - AGBs (diese müssen online zur Verfügung gestellt und bei j
- 94: Neue Produkte
- 95: Neue Produkte (Sortiment definieren): - Musikstücke zum Herunterladen - Produkte der Unterhaltungselektronik
- 96: Konzept Rollout SwissGrooves
- 97: Rollout-Konzept gemäss Ergebnisliste
- 98: Marketingkonzept
- 99: Marketing-Konzept gemäss Ergebnisliste
- 100: Schulungskonzept SwissGrooves
- 101: Schulungskonzept gemäss Ergebnisliste

| ID | WBS | Task | Type | Duration | Start | Finish | Predecessors | Total slack | Free slack | Resources | Work | Profile |
| --- | --- | --- | --- | --- | --- | --- | --- | --- | --- | --- | --- | --- |
| 102 | 1.22 | **R4.4 SCH** |  | 1d | 2014-09-05 | 2014-09-08 | 14, 15, 16, 17, 18, 19, 20, 21, 22, 23, 24, 25, 26, 27, 28, 29, 30, 32, 33, 34, 35, 37, 38, 82, 86, 96, 100, 36 | 0d |  |  | 69.6h |  |
| 103 | 1.22.1 | SCH |  | 1d | 2014-09-05 | 2014-09-08 | 39, 40, 104 | 0d |  | Berlusconi Silvio; Blair Tony; Blocher Christoph [80%]; Bush George [90%]; Clay Cassius; Clinton Hillary; Lauda Niki; Obama Barak; Pelé; Putin Vladimir; Sarkozy Nicolas | 69.6h | Test-Spezialist |
| 104 | 1.23 | **R4.5 BP** |  | 3d | 2014-09-01 | 2014-09-03 | 14, 15, 16, 17, 18, 19, 20, 21, 22, 23, 24, 25, 26, 27, 28, 29, 30, 32, 33, 34, 35, 37, 38, 82, 86, 96, 100, 36 | 2d |  |  | 24h |  |
| 105 | 1.23.1 | BP |  | 3d | 2014-09-01 | 2014-09-03 |  | 2d |  | Sarkozy Nicolas | 24h | Java-Entwickler |
| 106 | 1.24 | **R5.1 PA** |  | 5d | 2014-04-01 | 2014-04-07 | 2 | 14d | 11d |  | 40h |  |
| 107 | 1.24.1 | PA |  | 5d | 2014-04-01 | 2014-04-07 |  | 14d |  | Putin Vladimir | 40h | Projektleiter |
| 108 | 1.25 | **R5.2 PP** |  | 11d | 2014-04-21 | 2014-05-05 |  | 3d |  |  | 88h |  |
| 109 | 1.25.1 | **R5.2.1 PP0.4** |  | 2d | 2014-04-21 | 2014-04-22 | 2 | 3d | 0d |  | 16h |  |
| 110 | 1.25.1.1 | PP01 |  | 2d | 2014-04-21 | 2014-04-22 |  | 3d |  | Putin Vladimir | 16h | Projektleiter |
| 111 | 1.25.2 | **R5.2.2 PP0.7** |  | 4d | 2014-04-23 | 2014-04-28 | 109 | 15d | 0d |  | 32h |  |
| 112 | 1.25.2.1 | PP07 |  | 4d | 2014-04-23 | 2014-04-28 |  | 15d |  | Putin Vladimir | 32h | Projektleiter |
| 113 | 1.25.3 | **R5.2.3 PP1.0** |  | 5d | 2014-04-29 | 2014-05-05 | 111 | 15d |  |  | 40h |  |
| 114 | 1.25.3.1 | PP10 |  | 5d | 2014-04-29 | 2014-05-05 |  | 15d |  | Putin Vladimir | 40h | Projektleiter |
| 115 | 1.26 | **R5.3 RA** |  | 2d | 2014-04-08 | 2014-04-09 | 2 | 12d | 9d |  | 16h |  |
| 116 | 1.26.1 | RA |  | 2d | 2014-04-08 | 2014-04-09 |  | 12d |  | Putin Vladimir | 16h | Projektleiter |
| 117 | 1.27 | **R5.4 KP** |  | 1d | 2014-04-21 | 2014-04-21 | 2 | 4d | 1d |  | 8h |  |
| 118 | 1.27.1 | KP |  | 1d | 2014-04-21 | 2014-04-21 |  | 4d |  | Sarkozy Nicolas | 8h | Projektleiter |
| 119 | 1.28 | **R5.5 ST** |  | 10d | 2014-04-01 | 2014-04-14 | 2 | 9d | 6d |  | 80h |  |
| 120 | 1.28.1 | ST |  | 10d | 2014-04-01 | 2014-04-14 |  | 9d |  | Berlusconi Silvio | 80h | Projektleiter |
| 121 | 2 | Projektabschluss | milestone | 0d | 2014-09-08 | 2014-09-08 | 102 | 0d |  |  |  |  |

Notes:
- 102: Schulungsdurchführung
- 103: Durchführung der Schulungen gemäss Ergebnisliste: Auch die Teilnehmer sind einzurechnen (15 Leute, 1 Tag)
- 104: Befüllung Webshop
- 105: Befüllung Webshop gemäss Ergebnisliste mit Hilfe der Import-Programme aus dem AP AR-Rea-Content
- 106: Projektantrag
- 107: Projektantrag gemäss Ergebnisliste
- 109: Projektantrag
- 110: Projektplan gemäss Ergebnisliste
- 111: Project Plan Version V 0.7
- 112: Projektplan gemäss Ergebnisliste
- 113: Projektplan Version 1.0
- 114: Projektplan gemäss Ergebnisliste
- 115: Risikoanalyse
- 116: Risikoanalyse gemäss Ergebnisliste
- 117: Kommunikationsplan
- 118: Kommunikationsplan gemäss Ergebnisliste
- 119: Entscheidungsvorlage
- 120: Entscheidungsvorlage: Webshop mieten, Standardlösung kaufen oder OpenSource-Lösung anpassen?
